# main

Schedule from MS Project, 2023-05-08 to 2027-12-02.

## Calendars

- 标准: Mon-Fri 08:00-12:00, 13:00-17:00; Sat-Sun off.

## Resources

| Resource |
| --- |
| MKT技术人员 |

## Schedule

| ID | Task | Duration | Start | Finish | Predecessors | Total slack | Free slack | Constraint |
| --- | --- | --- | --- | --- | --- | --- | --- | --- |
| 1 | 业务目标确认 | 2d | 2023-05-08 | 2023-05-09 |  | 0d |  | start no earlier than 2023-05-08 |
| 2 | 商业分析 | 2d | 2023-05-10 | 2023-05-11 | 1 | 0d |  |  |
| 3 | 竞品分析 | 2d | 2023-05-12 | 2023-05-15 | 2 | 0d |  |  |
| 4 | 场景分析 | 1d | 2023-05-16 | 2023-05-16 | 3 | 0d |  |  |
| 5 | 需求建模 | 5d | 2023-05-17 | 2023-05-23 | 4 | 0d |  |  |
| 6 | 数据信息结构设计 | 3d | 2023-05-24 | 2023-05-26 | 5 | 0d |  |  |
| 7 | 硬件结构设计 | 3d | 2023-05-24 | 2023-05-26 | 5 | 0d |  |  |
| 8 | 页面信息结构设计 | 3d | 2023-05-24 | 2023-05-26 | 5 | 0d |  |  |
| 9 | 原型设计 | 7d | 2023-05-29 | 2023-06-06 | 6, 7, 8 | 0d |  |  |
| 10 | 需求评审/产品需求文档确认 | 2d | 2023-06-07 | 2023-06-08 | 9 | 0d |  |  |
| 11 | 界面评审 | 2d | 2023-06-09 | 2023-06-12 | 10 | 14d | 0d |  |
| 12 | 硬件设计评审 | 2d | 2023-06-09 | 2023-06-12 | 10 | 21d | 0d |  |
| 13 | 软件核心开发和测试 | 30d | 2023-06-09 | 2023-07-20 | 10 | 0d |  |  |
| 14 | 安全模块软件开发和测试 | 14d | 2023-06-09 | 2023-06-28 | 10 | 16d |  |  |
| 15 | 健康关怀模块软件开发和测试 | 14d | 2023-06-09 | 2023-06-28 | 10 | 16d |  |  |
| 16 | 中央控制台用户界面开发和测试 | 14d | 2023-06-13 | 2023-06-30 | 11 | 14d |  |  |
| 17 | 手机APP 用户界面开发和测试 | 14d | 2023-06-13 | 2023-06-30 | 11 | 21d | 14d |  |
| 18 | 家庭物联网协调器硬件开发 | 14d | 2023-06-13 | 2023-06-30 | 12 | 28d | 0d |  |
| 19 | 中央控制台硬件开发 | 14d | 2023-06-13 | 2023-06-30 | 12 | 21d | 0d |  |
| 20 | 手机APP整合测试调优 | 14d | 2023-07-21 | 2023-08-09 | 13, 14, 15, 17 | 7d |  |  |
| 21 | 中央控制台软件整合测试调优 | 14d | 2023-07-21 | 2023-08-09 | 13, 14, 15, 16 | 0d |  |  |
| 22 | 家庭物联网协调器测试调优 | 7d | 2023-07-03 | 2023-07-11 | 18 | 28d |  |  |
| 23 | 中央控制台硬件测试调优 | 7d | 2023-07-03 | 2023-07-11 | 19 | 21d |  |  |
| 24 | 中央控制台整合测试调优 | 7d | 2023-08-10 | 2023-08-18 | 21, 23 | 0d |  |  |
| 25 | 最小可行产品整合测试调优 | 14d | 2023-08-21 | 2023-09-07 | 20, 22, 24 | 0d |  |  |
| 26 | 最小可行产品上线准备 | 3d | 2023-09-08 | 2023-09-12 | 25 | 0d |  |  |
| 27 | 最小可行产品上线 | 7d | 2023-09-13 | 2023-09-21 | 26 | 0d |  |  |
| 28 | 收集分析总结用户反馈 | 30d | 2023-09-22 | 2023-11-02 | 27 | 1065d |  |  |
| 29 | 运维调度 | 1095d | 2023-09-22 | 2027-12-02 | 27 | 0d |  |  |
